# 自动驾驶管理系统

Schedule from a web Gantt chart, 2026-03-19 to 2026-05-16.
Every day is a working day
武汉AVP管理系统

## Schedule

| ID | WBS | Task | Duration | Start | Finish | Status |
| --- | --- | --- | --- | --- | --- | --- |
| 2 | 1 | **AVP平台** | 51d | 2026-03-19 | 2026-05-08 | waiting |
| 3 | 1.1 | **代客泊车预约系统 （移动端）** | 25d | 2026-04-06 | 2026-04-30 | waiting |
| 4 | 1.1.1 | **首页** | 18d | 2026-04-06 | 2026-04-23 | waiting |
| 5 | 1.1.1.1 | 登录注册 | 2d | 2026-04-06 | 2026-04-07 | waiting |
| 6 | 1.1.1.2 | 用户定位展示 | 2d | 2026-04-07 | 2026-04-08 | waiting |
| 7 | 1.1.1.3 | 车辆定位展示 | 2d | 2026-04-09 | 2026-04-10 | waiting |
| 8 | 1.1.1.4 | 停车场分布展示 | 2d | 2026-04-13 | 2026-04-14 | waiting |
| 9 | 1.1.1.5 | 车辆状态展示 | 3d | 2026-04-15 | 2026-04-17 | waiting |
| 10 | 1.1.1.6 | 一键泊车 | 5d | 2026-04-17 | 2026-04-21 | waiting |
| 11 | 1.1.1.7 | 一键召车 | 5d | 2026-04-17 | 2026-04-21 | waiting |
| 12 | 1.1.1.8 | 过程跟踪 | 3d | 2026-04-21 | 2026-04-23 | waiting |
| 13 | 1.1.2 | **个人中心** | 8d | 2026-04-23 | 2026-04-30 | waiting |
| 14 | 1.1.2.1 | 车辆管理 | 2d | 2026-04-23 | 2026-04-24 | waiting |
| 15 | 1.1.2.2 | 预警管理 | 2d | 2026-04-25 | 2026-04-26 | waiting |
| 16 | 1.1.2.3 | 泊车记录 | 2d | 2026-04-27 | 2026-04-28 | waiting |
| 17 | 1.1.2.4 | 召车记录 | 2d | 2026-04-29 | 2026-04-30 | waiting |
| 18 | 1.2 | **代客泊车管理系统 （web端）** | 33d | 2026-03-19 | 2026-04-20 | waiting |
| 19 | 1.2.1 | **首页概要** | 7d | 2026-03-19 | 2026-03-25 | waiting |
| 20 | 1.2.1.1 | 停车场统计信息 | 1d | 2026-03-19 | 2026-03-19 | waiting |
| 21 | 1.2.1.2 | 客户统计信息 | 1d | 2026-03-20 | 2026-03-20 | waiting |
| 22 | 1.2.1.3 | 车辆统计信息 | 1d | 2026-03-21 | 2026-03-21 | waiting |
| 23 | 1.2.1.4 | 停车场3D可视化 | 1d | 2026-03-22 | 2026-03-22 | waiting |
| 24 | 1.2.1.5 | 可预约车位信息 | 1d | 2026-03-23 | 2026-03-23 | waiting |
| 25 | 1.2.1.6 | 在场AVP车辆信息 | 1d | 2026-03-24 | 2026-03-24 | waiting |
| 26 | 1.2.1.7 | 在场AVP车辆预警信息 | 1d | 2026-03-25 | 2026-03-25 | waiting |
| 27 | 1.2.2 | 预约管理 | 1d | 2026-03-26 | 2026-03-26 | waiting |

| ID | WBS | Task | Duration | Start | Finish | Status |
| --- | --- | --- | --- | --- | --- | --- |
| 28 | 1.2.3 | **场端管理** | 6d | 2026-03-27 | 2026-04-01 | waiting |
| 29 | 1.2.3.1 | 停车场管理 | 1d | 2026-03-27 | 2026-03-27 | waiting |
| 30 | 1.2.3.2 | 出入口管理 | 1d | 2026-03-28 | 2026-03-28 | waiting |
| 31 | 1.2.3.3 | 停车楼层管理 | 1d | 2026-03-29 | 2026-03-29 | waiting |
| 32 | 1.2.3.4 | 停车区域管理 | 1d | 2026-03-30 | 2026-03-30 | waiting |
| 33 | 1.2.3.5 | 停车位管理 | 1d | 2026-03-31 | 2026-03-31 | waiting |
| 34 | 1.2.3.6 | 道闸管理 | 1d | 2026-04-01 | 2026-04-01 | waiting |
| 35 | 1.2.4 | **地图管理** | 3d | 2026-04-02 | 2026-04-04 | waiting |
| 36 | 1.2.4.1 | 高精地图管理 | 2d | 2026-04-02 | 2026-04-03 | waiting |
| 37 | 1.2.4.2 | 特征地图管理 | 2d | 2026-04-03 | 2026-04-04 | waiting |
| 38 | 1.2.5 | **客户管理** | 2d | 2026-04-05 | 2026-04-06 | waiting |
| 39 | 1.2.5.1 | 泊车用户管理 | 1d | 2026-04-05 | 2026-04-05 | waiting |
| 40 | 1.2.5.2 | 泊车客户管理 | 1d | 2026-04-06 | 2026-04-06 | waiting |
| 41 | 1.2.6 | 车辆管理 | 1d | 2026-04-07 | 2026-04-07 | waiting |
| 42 | 1.2.7 | 预警管理 | 1d | 2026-04-08 | 2026-04-08 | waiting |
| 43 | 1.2.8 | **算法模块** | 5d | 2026-04-09 | 2026-04-13 | waiting |
| 44 | 1.2.8.1 | 路径规划算法 | 3d | 2026-04-09 | 2026-04-11 | waiting |
| 45 | 1.2.8.2 | 泊位分配算法 | 3d | 2026-04-11 | 2026-04-13 | waiting |
| 46 | 1.2.9 | **信息发布模块** | 3d | 2026-04-13 | 2026-04-15 | waiting |
| 47 | 1.2.9.1 | 路径信息发布 | 2d | 2026-04-13 | 2026-04-14 | waiting |
| 48 | 1.2.9.2 | 泊位信息发布 | 2d | 2026-04-14 | 2026-04-15 | waiting |
| 49 | 1.2.9.3 | 预警信息发布 | 2d | 2026-04-14 | 2026-04-15 | waiting |
| 50 | 1.2.10 | **地图处理模块** | 5d | 2026-04-16 | 2026-04-20 | waiting |
| 51 | 1.2.10.1 | 地图解析 | 3d | 2026-04-16 | 2026-04-18 | waiting |
| 52 | 1.2.10.2 | 地图渲染 | 3d | 2026-04-18 | 2026-04-20 | waiting |

| ID | WBS | Task | Duration | Start | Finish | Status |
| --- | --- | --- | --- | --- | --- | --- |
| 53 | 1.3 | **信息服务系统 （web端）** | 31d | 2026-03-27 | 2026-04-26 | waiting |
| 54 | 1.3.1 | **Map地图云服务** | 5d | 2026-04-20 | 2026-04-24 | waiting |
| 55 | 1.3.1.1 | 地图概览 | 1d | 2026-04-20 | 2026-04-20 | waiting |
| 56 | 1.3.1.2 | 地图分组 | 1d | 2026-04-21 | 2026-04-21 | waiting |
| 57 | 1.3.1.3 | 导入地图 | 1d | 2026-04-22 | 2026-04-22 | waiting |
| 58 | 1.3.1.4 | 导出地图 | 1d | 2026-04-23 | 2026-04-23 | waiting |
| 59 | 1.3.1.5 | 地图下发 | 1d | 2026-04-24 | 2026-04-24 | waiting |
| 60 | 1.3.2 | **交通事件管理** | 2d | 2026-04-24 | 2026-04-25 | waiting |
| 61 | 1.3.2.1 | 事件动态管理 | 1d | 2026-04-24 | 2026-04-24 | waiting |
| 62 | 1.3.2.2 | 事件发布记录 | 1d | 2026-04-25 | 2026-04-25 | waiting |
| 63 | 1.3.2.3 | 自动转发规则 | 1d | 2026-04-25 | 2026-04-25 | waiting |
| 64 | 1.3.3 | **标志标牌管理** | 31d | 2026-03-27 | 2026-04-26 | waiting |
| 65 | 1.3.3.1 | 标志标牌资源概览 | 1d | 2026-04-26 | 2026-04-26 | waiting |
| 66 | 1.3.3.2 | 导入标志标牌资源 | 1d | 2026-03-27 | 2026-03-27 | waiting |
| 67 | 1.3.3.3 | 标志标牌任务下发 | 1d | 2026-03-28 | 2026-03-28 | waiting |
| 68 | 1.4 | **应用管理系统 （web端）** | 11d | 2026-04-28 | 2026-05-08 | waiting |
| 69 | 1.4.1 | **统一账户管理** | 3d | 2026-04-28 | 2026-04-30 | waiting |
| 70 | 1.4.1.1 | 组织管理 | 1d | 2026-04-28 | 2026-04-28 | waiting |
| 71 | 1.4.1.2 | 用户管理 | 1d | 2026-04-29 | 2026-04-29 | waiting |
| 72 | 1.4.1.3 | 角色管理 | 1d | 2026-04-30 | 2026-04-30 | waiting |
| 73 | 1.4.2 | **设备接入管理** | 8d | 2026-05-01 | 2026-05-08 | waiting |
| 74 | 1.4.2.1 | 设备类型管理 | 2d | 2026-05-01 | 2026-05-02 | waiting |
| 75 | 1.4.2.2 | 产品管理 | 3d | 2026-05-03 | 2026-05-05 | waiting |
| 76 | 1.4.2.3 | 设备管理 | 3d | 2026-05-05 | 2026-05-07 | waiting |
| 77 | 1.4.2.4 | 协议管理 | 1d | 2026-05-08 | 2026-05-08 | waiting |

| ID | WBS | Task | Duration | Start | Finish | Status |
| --- | --- | --- | --- | --- | --- | --- |
| 78 | 2 | **路侧融合感知系统** | 48d | 2026-03-19 | 2026-05-05 | waiting |
| 79 | 2.1 | 感知子系统 | 13d | 2026-03-19 | 2026-03-31 | waiting |
| 80 | 2.2 | 边缘计算子系统 | 18d | 2026-03-31 | 2026-04-17 | waiting |
| 81 | 2.3 | 传输子系统 | 19d | 2026-04-17 | 2026-05-05 | waiting |
| 82 | 3 | **高精地图** | 17d | 2026-04-01 | 2026-04-17 | waiting |
| 83 | 3.1 | 采集范围 | 2d | 2026-04-01 | 2026-04-02 | waiting |
| 84 | 3.2 | 地图要素 | 3d | 2026-04-03 | 2026-04-05 | waiting |
| 85 | 3.3 | 数据结构 | 6d | 2026-04-06 | 2026-04-11 | waiting |
| 86 | 3.4 | 数据格式 | 4d | 2026-04-11 | 2026-04-14 | waiting |
| 87 | 3.5 | 数据精度 | 3d | 2026-04-15 | 2026-04-17 | waiting |
| 88 | 4 | **车辆对接** | 12d | 2026-04-06 | 2026-04-17 | waiting |
| 89 | 4.1 | 标准接口 | 5d | 2026-04-06 | 2026-04-10 | waiting |
| 90 | 4.2 | 对接萝卜快跑 | 8d | 2026-04-10 | 2026-04-17 | waiting |
| 91 | 5 | **测试阶段** | 58d | 2026-03-19 | 2026-05-15 | waiting |
| 92 | 5.1 | 单元测试 | 51d | 2026-03-19 | 2026-05-08 | waiting |
| 93 | 5.2 | 集成测试 | 11d | 2026-05-05 | 2026-05-15 | waiting |
| 94 | 5.3 | 系统测试 | 11d | 2026-05-05 | 2026-05-15 | waiting |
| 95 | 5.4 | Bug修复 | 11d | 2026-05-05 | 2026-05-15 | waiting |
| 96 | 6 | **部署上线** | 7d | 2026-05-10 | 2026-05-16 | waiting |
| 97 | 6.1 | 生产环境部署 | 7d | 2026-05-10 | 2026-05-16 | waiting |
| 98 | 6.2 | 上线验证 | 7d | 2026-05-10 | 2026-05-16 | waiting |
| 99 | 6.3 | 项目交付 | 7d | 2026-05-10 | 2026-05-16 | waiting |
